# TMULT — Terminal Multiuso (Porto do Açu) — Edifício Administrativo

Schedule from MS Project XML, 2026-10-01 to 2027-04-09.

## Schedule

| ID | Task | Duration | Start | Finish | Predecessors |
| --- | --- | --- | --- | --- | --- |
| 1 | TMULT — TERMINAL MULTIUSO (PORTO DO AÇU) — EDIFÍCIO ADMINISTRATIVO (180 DIAS) | 180d | 2026-10-01 | 2027-03-30 |  |
| 2 | A01 MOB CANTEIRO | 10d | 2026-10-01 | 2026-10-11 |  |
| 3 | A02 ESCAV INFRA | 6d | 2026-10-11 | 2026-10-17 | 2 |
| 4 | A03 SAPATAS CONC | 7d | 2026-10-17 | 2026-10-24 | 3 |
| 5 | A04 BALDRAMES CONC | 8d | 2026-10-24 | 2026-11-01 | 4 |
| 6 | A05 IMPERM BALDRAME | 3d | 2026-11-01 | 2026-11-04 | 5 |
| 7 | A06 REATERRO INFRA | 3d | 2026-11-04 | 2026-11-07 | 6 |
| 8 | A07 PILARES SUPRA | 9d | 2026-11-07 | 2026-11-16 | 7 |
| 9 | A08 VIGAS LAJE FORMA | 8d | 2026-11-16 | 2026-11-24 | 8 |
| 10 | A09 CONCRET LAJE H12 | 1d | 2026-11-24 | 2026-11-25 | 9 |
| 11 | A10 CURA DESFORMA | 12d | 2026-11-25 | 2026-12-07 | 10 |
| 12 | A11 ESTRUT TERCAS COB | 10d | 2026-12-07 | 2026-12-17 | 11 |
| 13 | A12 ALVENARIA VEDACAO | 20d | 2026-12-17 | 2027-01-06 | 11 |
| 14 | A13 TELHAS SANDWICH PLAT | 10d | 2027-01-06 | 2027-01-16 | 12, 13 |
| 15 | A14 ELET EMBUTIDA | 10d | 2027-01-06 | 2027-01-16 | 14 |
| 16 | A15 HIDR EMBUTIDA | 10d | 2027-01-16 | 2027-01-26 | 14 |
| 17 | A16 TESTE HIDROSTATICO 72H | 3d | 2027-01-26 | 2027-01-29 | 16 |
| 18 | A17 EMBOCO REBOCO | 14d | 2027-01-29 | 2027-02-12 | 17, 15 |
| 19 | A18 IMPERM WCS | 3d | 2027-01-29 | 2027-02-01 | 18 |
| 20 | A19 CONTRAPISO | 6d | 2027-02-01 | 2027-02-07 | 18 |
| 21 | A20 INFRA DUTOS HVAC | 10d | 2027-02-07 | 2027-02-17 | 18 |
| 22 | A21 ESQUADRIAS FIX | 8d | 2027-02-17 | 2027-02-25 | 18 |
| 23 | A22 PISO PORCELANATO | 14d | 2027-02-25 | 2027-03-11 | 20, 19 |
| 24 | A23 FIACAO TELECOM | 10d | 2027-02-25 | 2027-03-07 | 18 |
| 25 | A24 RODAPES ACAB | 4d | 2027-03-07 | 2027-03-11 | 23 |
| 26 | A25 PINTURA 1A DEMAO | 5d | 2027-03-11 | 2027-03-16 | 25, 21, 22, 24 |
| 27 | A26 APARELHOS HVAC | 6d | 2027-03-11 | 2027-03-17 | 26 |
| 28 | A27 LOUCAS METAIS | 6d | 2027-03-17 | 2027-03-23 | 26 |
| 29 | A28 LUMINARIAS ESPELHOS | 5d | 2027-03-23 | 2027-03-28 | 26 |
| 30 | A29 PINTURA FINAL | 7d | 2027-03-28 | 2027-04-04 | 27, 28, 29 |
| 31 | A30 COMISSIONAMENTO | 6d | 2027-03-28 | 2027-04-03 | 30 |
| 32 | A31 LIMPEZA ENTREGA | 6d | 2027-04-03 | 2027-04-09 | 31 |
